# Autonomous Go-Kart

Schedule from Planner, 2011-04-04 to 2011-08-12.
University of Canterbury
Phase: Design

## Calendars

- Default: Mon-Sun 10:00-12:00, 13:00-14:00.

## Schedule

| ID | WBS | Task | Type | Duration | Start | Finish | Predecessors | Complete | Constraint | Work |
| --- | --- | --- | --- | --- | --- | --- | --- | --- | --- | --- |
| 1 | 1 | **Autonomous Go-Kart** |  |  | 2011-04-04 | 2011-08-11 |  |  |  | 723h |
| 2 | 1.1 | Assessment: Specification Report | milestone | 0d | 2011-05-09 | 2011-05-09 |  |  | must start on 2011-05-09 |  |
| 3 | 1.2 | **Design phase** |  |  | 2011-04-04 | 2011-06-07 |  |  |  | 285h |
| 4 | 1.2.1 | System Diagrams |  |  | 2011-04-04 | 2011-05-08 |  |  |  | 105h |
| 5 | 1.2.2 | Parts List |  |  | 2011-05-09 | 2011-06-02 | 4 |  |  | 75h |
| 6 | 1.2.3 | Servo Selection |  |  | 2011-04-04 | 2011-04-18 |  |  |  | 45h |
| 7 | 1.2.4 | Servo Mount Design |  |  | 2011-04-19 | 2011-05-03 | 6 |  |  | 45h |
| 8 | 1.2.5 | Costing |  |  | 2011-06-03 | 2011-06-07 | 7, 6, 5 |  |  | 15h |
| 9 | 1.3 | **Autonomous Hardware** |  |  | 2011-04-04 | 2011-04-18 |  | 9% |  | 90h |
| 10 | 1.3.1 | Sensors |  |  | 2011-04-04 | 2011-04-18 |  |  |  | 45h |
| 11 | 1.3.2 | Control interface |  |  | 2011-04-04 | 2011-04-18 |  |  |  | 45h |
| 12 | 1.4 | Order Electronics |  |  | 2011-06-08 | 2011-06-28 | 8 |  |  | 63h |
| 13 | 1.5 | Order Servos |  |  | 2011-06-08 | 2011-06-21 | 8 |  |  | 42h |
| 14 | 1.6 | **Build Hardware** |  |  | 2011-06-22 | 2011-07-03 | 3 |  |  | 45h |
| 15 | 1.6.1 | Mechanical Hardware |  |  | 2011-06-22 | 2011-07-01 | 13 |  |  | 30h |
| 16 | 1.6.2 | Electronics Hardware |  |  | 2011-06-29 | 2011-07-03 | 12 |  |  | 15h |
| 17 | 1.7 | **Software Devel** |  |  | 2011-04-19 | 2011-06-02 | 9 |  |  | 198h |
| 18 | 1.7.1 | Automation Software |  |  | 2011-04-19 | 2011-06-02 |  |  |  | 135h |
| 19 | 1.7.2 | Control Software |  |  | 2011-04-19 | 2011-05-09 |  |  |  | 63h |
| 20 | 1.8 | Deadline for new jobs in the workshop | milestone | 0d | 2011-08-12 | 2011-08-12 |  |  | must start on 2011-08-12 |  |
